# OSG PKI Project

Schedule from MS Project, 2012-03-12 to 2013-11-05.
FNAL

## Calendars

- Standard: Mon-Fri 08:00-12:00, 13:00-17:00; Sat-Sun off.

## Resources

| Resource |
| --- |
| Welch |
| Basney |
| Altunay |
| Fischer |
| Sehgal |
| Padmanabhan |

## Schedule

| ID | WBS | Task | Duration | Start | Finish | Predecessors | Total slack | Free slack |
| --- | --- | --- | --- | --- | --- | --- | --- | --- |
| 1 | 1 | **Planning Phase** | 50d | 2012-03-12 | 2012-05-18 |  | 0d |  |
| 2 | 1.1 | Document Technical Plan | 30d | 2012-03-12 | 2012-04-20 |  | 0d |  |
| 3 | 1.2 | Document Acceptance Test Plan | 15d | 2012-04-23 | 2012-05-11 | 2 | 0d |  |
| 4 | 1.3 | Document Transition Plan | 15d | 2012-04-23 | 2012-05-11 | 2 | 0d |  |
| 5 | 1.4 | Document Communications Plan | 10d | 2012-04-23 | 2012-05-04 | 2 | 5d |  |
| 6 | 1.5 | Document Training Plan | 10d | 2012-04-23 | 2012-05-04 | 2 | 5d |  |
| 7 | 1.6 | Baseline WBS and Timeline | 5d | 2012-05-14 | 2012-05-18 | 6, 2, 3, 4, 5 | 0d |  |
| 8 | 1.7 | Finalize & Sign Contract between DigiCert & Indiana | 20d | 2012-04-23 | 2012-05-18 | 2 | 0d |  |
| 9 | 2 | **Development Phase** | 75d | 2012-05-21 | 2012-08-31 |  | 0d |  |
| 10 | 2.1 | **Develop the OSG CA web service front-end and integrate with the DigiCert CA** | 60d | 2012-05-21 | 2012-08-10 |  | 0d |  |
| 11 | 2.1.1 | Develop software and associated documentation | 30d | 2012-05-21 | 2012-06-29 | 1 | 0d |  |
| 12 | 2.1.2 | Review by the OSG software area of the resulting code and support documentation. | 10d | 2012-07-02 | 2012-07-13 | 11 | 0d |  |
| 13 | 2.1.3 | Developer Testing of New Solutions | 20d | 2012-07-16 | 2012-08-10 | 12 | 0d |  |
| 14 | 2.2 | Define changes to operational procedures, policy and other changes defined in the Planning phase. | 15d | 2012-05-21 | 2012-06-08 | 1 | 50d | 0d |
| 15 | 2.3 | Define Contingency Plan elements for the event that the DigiCert CA becomes unavailable; and conduct an OSG internal review | 15d | 2012-06-11 | 2012-06-29 | 14 | 50d |  |
| 16 | 2.4 | Conduct Acceptance Testing of System | 15d | 2012-08-13 | 2012-08-31 | 13 | 5d |  |
| 17 | 2.5 | Update Transition Plan | 3d | 2012-08-13 | 2012-08-15 | 13 | 17d |  |
| 18 | 2.6 | Update Training Plan | 3d | 2012-08-13 | 2012-08-15 | 13 | 17d |  |
| 19 | 2.7 | Update Communications Plan | 3d | 2012-08-13 | 2012-08-15 | 13 | 17d |  |
| 20 | 3 | **Deployment Phase** | 35d | 2012-08-13 | 2012-09-28 |  | 0d |  |
| 21 | 3.1 | **Deploy the OSG CA - the OSG web front-end and operations components** | 35d | 2012-08-13 | 2012-09-28 |  | 0d |  |
| 22 | 3.1.1 | Procure Hardware | 15d | 2012-08-13 | 2012-08-31 | 13 | 0d |  |
| 23 | 3.1.2 | New Server Setup | 5d | 2012-09-03 | 2012-09-07 | 22 | 0d |  |
| 24 | 3.1.3 | Install Software | 5d | 2012-09-10 | 2012-09-14 | 16, 23 | 0d |  |
| 25 | 3.1.4 | Friendly User Testing | 10d | 2012-09-17 | 2012-09-28 | 24 | 0d |  |
| 26 | 3.2 | Execute Training Plan for OSG Staff | 15d | 2012-09-03 | 2012-09-21 | 9 | 5d |  |
| 27 | 3.3 | Implement changes to operational procedures, policy and other changes defined in the Planning phase. | 10d | 2012-09-03 | 2012-09-14 | 9 | 10d |  |
| 28 | 3.4 | Implement contingency Plan elements for the event that the DigiCert CA becomes unavailable | 10d | 2012-09-03 | 2012-09-14 | 9 | 10d |  |
| 29 | 3.5 | Transfer new software packages ownership to OSG Software team | 5d | 2012-09-03 | 2012-09-07 | 9 | 15d |  |

| ID | WBS | Task | Duration | Start | Finish | Predecessors | Total slack |
| --- | --- | --- | --- | --- | --- | --- | --- |
| 30 | 4 | **Transition** | 25d | 2012-10-01 | 2012-11-02 |  | 0d |
| 31 | 4.1 | Execute Communications Plan | 4d | 2012-10-01 | 2012-10-04 | 20 | 21d |
| 32 | 4.2 | Execute Training Plan for User Community | 20d | 2012-10-01 | 2012-10-26 | 20 | 5d |
| 33 | 4.3 | Issue DigiCerts certs for "friendly" user community | 5d | 2012-10-01 | 2012-10-05 | 20 | 0d |
| 34 | 4.4 | Regression test OSG functionality using new Certs | 20d | 2012-10-08 | 2012-11-02 | 33 | 0d |
| 35 | 4.5 | Test End-to-End Contingency Plan | 20d | 2012-10-08 | 2012-11-02 | 33 | 0d |
| 36 | 5 | **First Year of Operations** | 262d | 2012-11-05 | 2013-11-05 |  | 0d |
| 37 | 5.1 | Stop issueing new certs from DOEGrids | 1d | 2012-11-05 | 2012-11-05 | 30 | 0d |
| 38 | 5.2 | Start issueing new and renewal certs from DigiCert | 1d | 2012-11-05 | 2012-11-05 | 30 | 261d |
| 39 | 5.3 | "Drain" all active certs from DOEGrids CA | 260d | 2012-11-06 | 2013-11-04 | 37 | 0d |
| 40 | 5.4 | Shut off DEOGrid CA | 1d | 2013-11-05 | 2013-11-05 | 39 | 0d |
